# Práctica 1 - MEDIATEC - Escenario base (Cuestión 1)

Schedule from MS Project, 2026-02-17 to 2026-04-09, costs in €.
MEDIATEC

## Calendars

- Laboral Huelva 2026: Mon-Fri 08:00-12:00, 13:00-17:00; Sat-Sun off. Exceptions (off unless hours are given): 2026-02-28 (Día de Andalucía (sábado, sin traslado)), 2026-04-02 (Festivo Jueves Santo), 2026-04-03 (Festivo Viernes Santo).
- Personal MEDIATEC (con reuniones): Mon-Fri 08:00-12:00, 13:00-17:00; Sat-Sun off. Exceptions (off unless hours are given): 2026-02-23 08:00-10:00, 11:00-12:00, 13:00-17:00 (Reunión de seguimiento 23/02), 2026-02-28 (Día de Andalucía (sábado, sin traslado)), 2026-03-09 08:00-10:00, 11:00-12:00, 13:00-17:00 (Reunión de seguimiento 09/03), 2026-03-23 08:00-10:00, 11:00-12:00, 13:00-17:00 (Reunión de seguimiento 23/03), 2026-04-02 (Festivo Jueves Santo), 2026-04-03 (Festivo Viernes Santo), 2026-04-06 08:00-10:00, 11:00-12:00, 13:00-17:00 (Reunión de seguimiento 06/04).

## Resources

| Resource | Group | Rate | Notes |
| --- | --- | --- | --- |
| Álvaro Nieto | Analista / Supervisor | 29.16 | Subida general del 2 % desde el 20/03/2026. |
| Marta Salas | Jefa de proyecto / Analista | 29.16 | Tabla A: tarea de Jefa de Proyecto. Tabla B: tareas ajenas al rol de JP (+20 %). |
| Lucía Prieto | Analista / Supervisora | 29.16 | Tabla A: analista. Tabla B: supervisora (+8 %). |
| Diego Manzano | Analista / Programador | 29.16 | Promoción el 01/03/2026 (+12 %) y subida general el 20/03/2026 (+2 %). |
| Rubén Ferrer | Programador / Analista | 22.83 | Tabla A: programador. Tabla B: analista (150 % del sueldo de programador). |
| Operarios estructuras metálicas | Subcontrata estructuras metálicas | 34 | 2 operarios del fabricante de soportes. 34 €/h normal, +30 % hora extra. |

## Schedule

| ID | WBS | Task | Type | Duration | Start | Finish | Predecessors | Baseline start | Baseline finish | Baseline duration | Total slack | Free slack | Calendar | Resources | Work | Cost | Baseline cost |
| --- | --- | --- | --- | --- | --- | --- | --- | --- | --- | --- | --- | --- | --- | --- | --- | --- | --- |
| 1 | 1 | **I. Puntos de control en las salas de entrenamiento** |  | 24d | 2026-02-17 | 2026-03-20 |  | 2026-02-17 | 2026-03-20 | 24d | 9.31d |  |  |  | 180h | 21,536.88 | 21,536.88 |
| 2 | 1.1 | Montaje de soportes metálicos (240 uds.) |  | 7.5d | 2026-02-17 | 2026-02-26 |  | 2026-02-17 | 2026-02-26 | 7.5d | 9.94d | 0d |  | Operarios estructuras metálicas [200%] | 120h | 6,048 | 6,048 |
| 3 | 1.2 | **Instalación eléctrica (subcontrata)** |  | 7d | 2026-02-27 | 2026-03-10 |  | 2026-02-27 | 2026-03-10 | 7d | 13.94d |  |  |  |  | 1,260 | 1,260 |
| 4 | 1.2.1 | Instalar cables eléctricos |  | 5d | 2026-02-27 | 2026-03-06 | 2FS+1d | 2026-02-27 | 2026-03-06 | 5d | 13.94d | 0d |  |  |  | 920 | 920 |
| 5 | 1.2.2 | Instalar puntos de corriente |  | 2d | 2026-03-06 | 2026-03-10 | 4 | 2026-03-06 | 2026-03-10 | 2d | 13.94d | 4.75d |  |  |  | 340 | 340 |
| 6 | 1.3 | **Instalación de red (subcontrata)** |  | 11d | 2026-02-27 | 2026-03-16 |  | 2026-02-27 | 2026-03-16 | 11d | 9.94d |  |  |  |  | 1,910 | 1,910 |
| 7 | 1.3.1 | Instalar canaletas |  | 2d | 2026-02-27 | 2026-03-03 | 2FS+1d | 2026-02-27 | 2026-03-03 | 2d | 9.94d | 0d |  |  |  | 230 | 230 |
| 8 | 1.3.2 | Instalar cables de red |  | 4d | 2026-03-03 | 2026-03-09 | 7 | 2026-03-03 | 2026-03-09 | 4d | 9.94d | 0d |  |  |  | 640 | 640 |
| 9 | 1.3.3 | Instalar tomas de red en los puntos de control |  | 3d | 2026-03-09 | 2026-03-12 | 8 | 2026-03-09 | 2026-03-12 | 3d | 9.94d | 0d |  |  |  | 580 | 580 |
| 10 | 1.3.4 | Montaje del armario de comunicaciones, pruebas y certificación de la red |  | 2d | 2026-03-12 | 2026-03-16 | 9, 18 | 2026-03-12 | 2026-03-16 | 2d | 9.94d | 0.75d |  |  |  | 460 | 460 |
| 11 | 1.4 | Montaje de terminales táctiles y cierre de puntos de control |  | 3.75d | 2026-03-17 | 2026-03-20 | 5, 10, 32 | 2026-03-17 | 2026-03-20 | 3.75d | 9.06d |  | Personal MEDIATEC (con reuniones) | Álvaro Nieto; Lucía Prieto | 60h | 12,318.88 | 12,318.88 |
| 12 | 2 | **II. Tornos de acceso** |  | 3d | 2026-02-26 | 2026-03-03 |  | 2026-02-26 | 2026-03-03 | 3d | 22.69d |  |  |  | 56h | 13,764.64 | 13,764.64 |
| 13 | 2.1 | Montaje de los 3 tornos |  | 2d | 2026-02-26 | 2026-03-02 | 2 | 2026-02-26 | 2026-03-02 | 2d | 22.69d | 0d |  | Operarios estructuras metálicas [200%] | 32h | 6,638 | 6,638 |
| 14 | 2.2 | Montaje de barreras y pasillos |  | 1d | 2026-03-02 | 2026-03-03 | 13 | 2026-03-02 | 2026-03-03 | 1d | 24.56d |  |  | Operarios estructuras metálicas [200%] | 16h | 1,424 | 1,424 |
| 15 | 2.3 | Integración de los 6 dispositivos NFC |  | 1d | 2026-03-02 | 2026-03-03 | 13 | 2026-03-02 | 2026-03-03 | 1d | 22.44d |  | Personal MEDIATEC (con reuniones) | Rubén Ferrer | 8h | 5,702.64 | 5,702.64 |
| 16 | 3 | **III. Infraestructura común y equipamiento** |  | 2d | 2026-02-17 | 2026-02-18 |  | 2026-02-17 | 2026-02-18 | 2d | 27.44d |  |  |  | 16h | 14,275.28 | 14,275.28 |
| 17 | 3.1 | Montaje y puesta a punto del servidor (incl. S.O.) |  | 2d | 2026-02-17 | 2026-02-18 |  | 2026-02-17 | 2026-02-18 | 2d | 29.56d |  | Personal MEDIATEC (con reuniones) | Rubén Ferrer | 16h | 6,035.28 | 6,035.28 |
| 18 | 3.2 | Suministro de armario, switches y patch panels | milestone | 0d | 2026-02-17 | 2026-02-17 |  | 2026-02-17 | 2026-02-17 | 0d | 27.06d | 17.25d | Personal MEDIATEC (con reuniones) |  |  | 8,240 | 8,240 |
| 19 | 4 | **IV. Desarrollo de la aplicación** |  | 31.94d | 2026-02-17 | 2026-04-01 |  | 2026-02-17 | 2026-04-01 | 31.94d | 0d |  |  |  | 694h | 20,179.56 | 20,179.56 |
| 20 | 4.1 | **Análisis** |  | 13.96d | 2026-02-17 | 2026-03-06 |  | 2026-02-17 | 2026-03-06 | 13.96d | 0d |  |  |  | 318h | 9,362.46 | 9,362.46 |
| 21 | 4.1.1 | 1 Definición del sistema |  | 3.67d | 2026-02-17 | 2026-02-20 |  | 2026-02-17 | 2026-02-20 | 3.67d | 0d |  | Personal MEDIATEC (con reuniones) | Álvaro Nieto; Lucía Prieto; Diego Manzano | 88h | 2,566.08 | 2,566.08 |
| 22 | 4.1.2 | 2 Establecimiento de requisitos |  | 2d | 2026-02-20 | 2026-02-24 | 21FS-1d | 2026-02-20 | 2026-02-24 | 2d | 0d |  | Personal MEDIATEC (con reuniones) | Álvaro Nieto; Lucía Prieto; Diego Manzano | 48h | 1,399.68 | 1,399.68 |
| 23 | 4.1.3 | 3 Modelado de casos de uso e interfaces |  | 2.75d | 2026-02-24 | 2026-02-27 | 21, 22 | 2026-02-24 | 2026-02-27 | 2.75d | 0d |  | Personal MEDIATEC (con reuniones) | Álvaro Nieto; Lucía Prieto; Diego Manzano | 66h | 1,924.56 | 1,924.56 |
| 24 | 4.1.4 | 4 Análisis de clases |  | 2.25d | 2026-02-27 | 2026-03-03 | 21, 23 | 2026-02-27 | 2026-03-03 | 2.25d | 0d |  | Personal MEDIATEC (con reuniones) | Álvaro Nieto; Lucía Prieto; Diego Manzano | 54h | 1,624.66 | 1,624.66 |
| 25 | 4.1.5 | 5 Análisis de consistencia |  | 1.42d | 2026-03-03 | 2026-03-05 | 22, 23, 24 | 2026-03-03 | 2026-03-05 | 1.42d | 0d |  | Personal MEDIATEC (con reuniones) | Álvaro Nieto; Lucía Prieto; Diego Manzano | 34h | 1,030.99 | 1,030.99 |
| 26 | 4.1.6 | 6 Aprobación del análisis |  | 1.75d | 2026-03-05 | 2026-03-06 | 25 | 2026-03-05 | 2026-03-06 | 1.75d | 0d |  | Personal MEDIATEC (con reuniones) | Lucía Prieto; Álvaro Nieto | 28h | 816.48 | 816.48 |

Notes:
- 2: Coste fijo = Soporte metálico 240 x 8.20 €
- 11: Coste fijo = Terminal táctil NFC 240 x 44.00 € / Predecesoras: 5 (corriente) y 10 (red certificada), exigidas por el enunciado (apdo. I.4). Vínculo adicional con el hito 'Cierre del diseño': vínculo de recurso, porque Álvaro y Lucía (personal propio que monta los terminales) están en las tareas de diseño 8, 9 y 10 hasta ese hito. Cierre en bloque (no progresivo): la tarea tiene más de 8 días de margen, por lo que el cierre progresivo no adelantaría la entrega.
- 13: Coste fijo = Torno bidireccional 3 x 1850.00 €
- 14: Coste fijo = Barreras y pasillos metálicos 1 x 880.00 €
- 15: Coste fijo = Dispositivo NFC torno 6 x 920.00 €
- 17: Coste fijo 300 €: suplemento de transporte especial del servidor / Coste fijo = Ordenador servidor 1 x 4500.00 € + Windows Server 2022 1 x 870.00 € + 300.00 €
- 18: Coste fijo = Switch 48p gestionable 6 x 1040.00 € + Patch panel 48p 6 x 210.00 € + Armario 24U 1 x 740.00 €
- 22: Vínculo con la tarea 1: FC-1 día (el enunciado, apdo. IV, permite que Requisitos arranque un día antes del fin de la Definición). En este escenario las tareas 1 y 2 las realizan los mismos tres analistas (Álvaro, Lucía, Diego) a jornada completa, por lo que el solape no puede ejecutarse sin sobreasignarlos (13,33 h/día el 20/02). Se aplica un retraso por redistribución de 1 día transcurrido: la tarea arranca al terminar la 1. El solape queda modelado y se aprovecha realmente en el Escenario B, donde cada tarea la hace un analista distinto.
- 23: Predecesoras del enunciado: 1. El vínculo 2->3 es un vínculo de recurso (lógica preferente): el mismo equipo de 3 analistas ejecuta 2, 3 y 4 de forma consecutiva al 100 %. Serie: (48+66+54)/24 = 7 días; en paralelo con un analista por tarea: 66/8 = 8,25 días. La serie es 1,25 días más corta y no sobreasigna a nadie.
- 24: Predecesoras del enunciado: 1. El vínculo 3->4 es un vínculo de recurso (mismo motivo que en la tarea 3).

| ID | WBS | Task | Type | Duration | Start | Finish | Predecessors | Baseline start | Baseline finish | Baseline duration | Total slack | Constraint | Deadline | Calendar | Resources | Work | Cost | Baseline cost |
| --- | --- | --- | --- | --- | --- | --- | --- | --- | --- | --- | --- | --- | --- | --- | --- | --- | --- | --- |
| 27 | 4.2 | **Diseño** |  | 6.29d | 2026-03-06 | 2026-03-17 |  | 2026-03-06 | 2026-03-17 | 6.29d | 0d |  |  |  |  | 174h | 5,080.43 | 5,080.43 |
| 28 | 4.2.1 | 7 Definición de la arquitectura del sistema |  | 1.42d | 2026-03-06 | 2026-03-10 | 26 | 2026-03-06 | 2026-03-10 | 1.42d | 0d |  |  | Personal MEDIATEC (con reuniones) | Álvaro Nieto; Lucía Prieto; Diego Manzano | 34h | 1,030.99 | 1,030.99 |
| 29 | 4.2.2 | 8 Diseño de clases |  | 3.75d | 2026-03-10 | 2026-03-16 | 28 | 2026-03-10 | 2026-03-16 | 3.75d | 0d |  |  | Personal MEDIATEC (con reuniones) | Álvaro Nieto; Rubén Ferrer | 50h | 1,331.4 | 1,331.4 |
| 30 | 4.2.3 | 9 Diseño de los datos |  | 3.75d | 2026-03-10 | 2026-03-16 | 28 | 2026-03-10 | 2026-03-16 | 3.75d | 0d |  |  | Personal MEDIATEC (con reuniones) | Lucía Prieto; Diego Manzano | 58h | 1,789 | 1,789 |
| 31 | 4.2.4 | 10 Verificación del diseño |  | 1d | 2026-03-16 | 2026-03-17 | 29, 30 | 2026-03-16 | 2026-03-17 | 1d | 0d |  |  | Personal MEDIATEC (con reuniones) | Diego Manzano; Rubén Ferrer; Álvaro Nieto; Lucía Prieto | 32h | 929.04 | 929.04 |
| 32 | 4.2.5 | HITO: Cierre del diseño | milestone | 0d | 2026-03-17 | 2026-03-17 | 31 | 2026-03-17 | 2026-03-17 | 0d | 0d |  |  | Personal MEDIATEC (con reuniones) |  |  |  |  |
| 33 | 4.3 | **Construcción** |  | 7.44d | 2026-03-17 | 2026-03-26 |  | 2026-03-17 | 2026-03-26 | 7.44d | 0d |  |  |  |  | 134h | 3,812.27 | 3,812.27 |
| 34 | 4.3.1 | 11 Codificación del módulo de escritorio |  | 2.75d | 2026-03-17 | 2026-03-19 | 32 | 2026-03-17 | 2026-03-19 | 2.75d | 0d |  |  | Personal MEDIATEC (con reuniones) | Diego Manzano; Rubén Ferrer | 44h | 1,220.56 | 1,220.56 |
| 35 | 4.3.2 | 12 Codificación del módulo web |  | 1.62d | 2026-03-20 | 2026-03-23 | 34 | 2026-03-20 | 2026-03-23 | 1.62d | 0d |  |  | Personal MEDIATEC (con reuniones) | Diego Manzano; Rubén Ferrer | 26h | 735.8 | 735.8 |
| 36 | 4.3.3 | 13 Integración del sistema |  | 1.88d | 2026-03-23 | 2026-03-25 | 34, 35 | 2026-03-23 | 2026-03-25 | 1.88d | 0d |  |  | Personal MEDIATEC (con reuniones) | Diego Manzano; Rubén Ferrer | 30h | 849 | 849 |
| 37 | 4.3.4 | 14 Aprobación del sistema |  | 1.06d | 2026-03-25 | 2026-03-26 | 36 | 2026-03-25 | 2026-03-26 | 1.06d | 0d |  |  | Personal MEDIATEC (con reuniones) | Diego Manzano; Rubén Ferrer; Álvaro Nieto; Lucía Prieto | 34h | 1,006.91 | 1,006.91 |
| 38 | 4.3.5 | HITO: Aprobación del sistema | milestone | 0d | 2026-03-26 | 2026-03-26 | 37 | 2026-03-26 | 2026-03-26 | 0d | 0d |  |  | Personal MEDIATEC (con reuniones) |  |  |  |  |
| 39 | 4.4 | **Pruebas** |  | 4.25d | 2026-03-26 | 2026-04-01 |  | 2026-03-26 | 2026-04-01 | 4.25d | 0d |  |  |  |  | 68h | 1,924.4 | 1,924.4 |
| 40 | 4.4.1 | 15 Ejecución de pruebas unitarias |  | 2.5d | 2026-03-26 | 2026-03-31 | 38 | 2026-03-26 | 2026-03-31 | 2.5d | 0d |  |  | Personal MEDIATEC (con reuniones) | Diego Manzano; Rubén Ferrer | 40h | 1,132 | 1,132 |
| 41 | 4.4.2 | 16 Ejecución de las pruebas de integración |  | 1.75d | 2026-03-31 | 2026-04-01 | 40 | 2026-03-31 | 2026-04-01 | 1.75d | 0d |  |  | Personal MEDIATEC (con reuniones) | Diego Manzano; Rubén Ferrer | 28h | 792.4 | 792.4 |
| 42 | 5 | **V. Instalación del software y prueba del sistema** |  | 3.12d | 2026-04-01 | 2026-04-09 |  | 2026-04-01 | 2026-04-09 | 3.12d | 0d |  |  |  |  | 96h | 2,785.92 | 2,785.92 |
| 43 | 5.1 | 17 Instalación y configuración de la aplicación en el servidor |  | 4h | 2026-04-01 | 2026-04-06 | 41, 17 | 2026-04-01 | 2026-04-06 | 4h | 0d |  |  | Personal MEDIATEC (con reuniones) | Álvaro Nieto; Lucía Prieto; Diego Manzano; Rubén Ferrer | 16h | 464.32 | 464.32 |
| 44 | 5.2 | 18 Carga de datos maestros y alta de tarjetas NFC |  | 6h | 2026-04-06 | 2026-04-07 | 43 | 2026-04-06 | 2026-04-07 | 6h | 0d |  |  | Personal MEDIATEC (con reuniones) | Álvaro Nieto; Lucía Prieto; Diego Manzano; Rubén Ferrer | 24h | 696.48 | 696.48 |
| 45 | 5.3 | 19 Pruebas integradas del sistema en las instalaciones del cliente |  | 1d | 2026-04-07 | 2026-04-08 | 44, 11, 15 | 2026-04-07 | 2026-04-08 | 1d | 0d |  |  | Personal MEDIATEC (con reuniones) | Álvaro Nieto; Lucía Prieto; Diego Manzano; Rubén Ferrer | 32h | 928.64 | 928.64 |
| 46 | 5.4 | 20 Formación al personal y puesta en marcha |  | 6h | 2026-04-08 | 2026-04-09 | 45 | 2026-04-08 | 2026-04-09 | 6h | 0d |  |  | Personal MEDIATEC (con reuniones) | Álvaro Nieto; Lucía Prieto; Diego Manzano; Rubén Ferrer | 24h | 696.48 | 696.48 |
| 47 | 6 | HITO: Entrega del proyecto | milestone | 0d | 2026-04-09 | 2026-04-09 | 46 | 2026-04-09 | 2026-04-09 | 0d | 0d |  | 2026-04-22 | Personal MEDIATEC (con reuniones) |  |  |  |  |
| 48 | 7 | **Reuniones de seguimiento (quincenales)** |  | 28.5d | 2026-02-23 | 2026-04-06 |  | 2026-02-23 | 2026-04-06 | 28.5d | 2.56d |  |  |  |  | 32h | 2,027.47 | 2,027.47 |
| 49 | 7.1 | Reunión 1: preparación (JP) |  | 2h | 2026-02-23 | 2026-02-23 |  | 2026-02-23 | 2026-02-23 | 2h | 30.81d | start no earlier than 2026-02-23 |  |  | Marta Salas | 2h | 58.32 | 58.32 |
| 50 | 7.2 | Reunión de seguimiento 1 |  | 1h | 2026-02-23 | 2026-02-23 |  | 2026-02-23 | 2026-02-23 | 1h | 30.69d | start no earlier than 2026-02-23 |  |  | Marta Salas; Álvaro Nieto; Lucía Prieto; Diego Manzano; Rubén Ferrer | 5h | 414.47 | 414.47 |
| 51 | 7.3 | Reunión 1: análisis (JP) |  | 1h | 2026-02-23 | 2026-02-23 |  | 2026-02-23 | 2026-02-23 | 1h | 30.56d | start no earlier than 2026-02-23 |  |  | Marta Salas | 1h | 29.16 | 29.16 |
| 52 | 7.4 | Reunión 2: preparación (JP) |  | 2h | 2026-03-09 | 2026-03-09 |  | 2026-03-09 | 2026-03-09 | 2h | 20.81d | start no earlier than 2026-03-09 |  |  | Marta Salas | 2h | 58.32 | 58.32 |
| 53 | 7.5 | Reunión de seguimiento 2 |  | 1h | 2026-03-09 | 2026-03-09 |  | 2026-03-09 | 2026-03-09 | 1h | 20.69d | start no earlier than 2026-03-09 |  |  | Marta Salas; Álvaro Nieto; Lucía Prieto; Diego Manzano; Rubén Ferrer | 5h | 417.96 | 417.96 |
| 54 | 7.6 | Reunión 2: análisis (JP) |  | 1h | 2026-03-09 | 2026-03-09 |  | 2026-03-09 | 2026-03-09 | 1h | 20.56d | start no earlier than 2026-03-09 |  |  | Marta Salas | 1h | 29.16 | 29.16 |
| 55 | 7.7 | Reunión 3: preparación (JP) |  | 2h | 2026-03-23 | 2026-03-23 |  | 2026-03-23 | 2026-03-23 | 2h | 10.81d | start no earlier than 2026-03-23 |  |  | Marta Salas | 2h | 59.48 | 59.48 |
| 56 | 7.8 | Reunión de seguimiento 3 |  | 1h | 2026-03-23 | 2026-03-23 |  | 2026-03-23 | 2026-03-23 | 1h | 10.69d | start no earlier than 2026-03-23 |  |  | Marta Salas; Álvaro Nieto; Lucía Prieto; Diego Manzano; Rubén Ferrer | 5h | 420.82 | 420.82 |
| 57 | 7.9 | Reunión 3: análisis (JP) |  | 1h | 2026-03-23 | 2026-03-23 |  | 2026-03-23 | 2026-03-23 | 1h | 10.56d | start no earlier than 2026-03-23 |  |  | Marta Salas | 1h | 29.74 | 29.74 |
| 58 | 7.10 | Reunión 4: preparación (JP) |  | 2h | 2026-04-06 | 2026-04-06 |  | 2026-04-06 | 2026-04-06 | 2h | 2.81d | start no earlier than 2026-04-06 |  |  | Marta Salas | 2h | 59.48 | 59.48 |
| 59 | 7.11 | Reunión de seguimiento 4 |  | 1h | 2026-04-06 | 2026-04-06 |  | 2026-04-06 | 2026-04-06 | 1h | 2.69d | start no earlier than 2026-04-06 |  |  | Marta Salas; Álvaro Nieto; Lucía Prieto; Diego Manzano; Rubén Ferrer | 5h | 420.82 | 420.82 |
| 60 | 7.12 | Reunión 4: análisis (JP) |  | 1h | 2026-04-06 | 2026-04-06 |  | 2026-04-06 | 2026-04-06 | 1h | 2.56d | start no earlier than 2026-04-06 |  |  | Marta Salas | 1h | 29.74 | 29.74 |

Notes:
- 32: Hito del enunciado (apdo. IV, Notas). Sucesoras: 11 y montaje de terminales.
- 38: Hito del enunciado (apdo. IV, Notas). Sucesora: 15.
- 50: Coste fijo 275 €: catering y breakfast
- 53: Coste fijo 275 €: catering y breakfast
- 56: Coste fijo 275 €: catering y breakfast
- 59: Coste fijo 275 €: catering y breakfast
