# Práctica 1 - MEDIATEC - Escenario C: reparto conservador + horas extra (máx. 2,5 h/día)

Schedule from MS Project, 2026-02-17 to 2026-05-07, costs in €.
MEDIATEC

## Calendars

- Laboral Huelva 2026: Mon-Fri 08:00-12:00, 13:00-17:00; Sat-Sun off. Exceptions (off unless hours are given): 2026-02-28 (Día de Andalucía (sábado, sin traslado)), 2026-04-02 (Festivo Jueves Santo), 2026-04-03 (Festivo Viernes Santo), 2026-05-01 (Fiesta del Trabajo).
- Personal MEDIATEC (con reuniones): Mon-Fri 08:00-12:00, 13:00-17:00; Sat-Sun off. Exceptions (off unless hours are given): 2026-02-23 08:00-10:00, 11:00-12:00, 13:00-17:00 (Reunión de seguimiento 23/02), 2026-02-28 (Día de Andalucía (sábado, sin traslado)), 2026-03-09 08:00-10:00, 11:00-12:00, 13:00-17:00 (Reunión de seguimiento 09/03), 2026-03-23 08:00-10:00, 11:00-12:00, 13:00-17:00 (Reunión de seguimiento 23/03), 2026-04-02 (Festivo Jueves Santo), 2026-04-03 (Festivo Viernes Santo), 2026-04-06 08:00-10:00, 11:00-12:00, 13:00-17:00 (Reunión de seguimiento 06/04), 2026-04-20 08:00-10:00, 11:00-12:00, 13:00-17:00 (Reunión de seguimiento 20/04), 2026-05-01 (Fiesta del Trabajo), 2026-05-04 08:00-10:00, 11:00-12:00, 13:00-17:00 (Reunión de seguimiento 04/05).

## Resources

| Resource | Group | Rate | Notes |
| --- | --- | --- | --- |
| Álvaro Nieto | Analista / Supervisor | 29.16 | Subida general del 2 % desde el 20/03/2026. |
| Marta Salas | Jefa de proyecto / Analista | 29.16 | Tabla A: tarea de Jefa de Proyecto. Tabla B: tareas ajenas al rol de JP (+20 %). |
| Lucía Prieto | Analista / Supervisora | 29.16 | Tabla A: analista. Tabla B: supervisora (+8 %). |
| Diego Manzano | Analista / Programador | 29.16 | Promoción el 01/03/2026 (+12 %) y subida general el 20/03/2026 (+2 %). |
| Rubén Ferrer | Programador / Analista | 22.83 | Tabla A: programador. Tabla B: analista (150 % del sueldo de programador). |
| Operarios estructuras metálicas | Subcontrata estructuras metálicas | 34 | 2 operarios del fabricante de soportes. 34 €/h normal, +30 % hora extra. |

## Schedule

| ID | WBS | Task | Type | Duration | Start | Finish | Predecessors | Baseline start | Baseline finish | Baseline duration | Total slack | Free slack | Calendar | Resources | Work | Cost | Baseline cost |
| --- | --- | --- | --- | --- | --- | --- | --- | --- | --- | --- | --- | --- | --- | --- | --- | --- | --- |
| 1 | 1 | **I. Puntos de control en las salas de entrenamiento** |  | 30.99d | 2026-02-17 08:00 | 2026-03-31 16:55 |  | 2026-02-17 08:00 | 2026-03-20 17:00 | 24d | 8.55d |  |  |  | 180h | 21,562.4 | 21,536.88 |
| 2 | 1.1 | Montaje de soportes metálicos (240 uds.) |  | 7.5d | 2026-02-17 08:00 | 2026-02-26 12:00 |  | 2026-02-17 08:00 | 2026-02-26 12:00 | 7.5d | 9.94d | 0d |  | Operarios estructuras metálicas [200%] | 120h | 6,048 | 6,048 |
| 3 | 1.2 | **Instalación eléctrica (subcontrata)** |  | 7d | 2026-02-27 13:00 | 2026-03-10 12:00 |  | 2026-02-27 13:00 | 2026-03-10 12:00 | 7d | 20.29d |  |  |  |  | 1,260 | 1,260 |
| 4 | 1.2.1 | Instalar cables eléctricos |  | 5d | 2026-02-27 13:00 | 2026-03-06 12:00 | 2FS+1d | 2026-02-27 13:00 | 2026-03-06 12:00 | 5d | 13.94d | 0d |  |  |  | 920 | 920 |
| 5 | 1.2.2 | Instalar puntos de corriente |  | 2d | 2026-03-06 13:00 | 2026-03-10 12:00 | 4 | 2026-03-06 13:00 | 2026-03-10 12:00 | 2d | 13.94d | 4.75d |  |  |  | 340 | 340 |
| 6 | 1.3 | **Instalación de red (subcontrata)** |  | 11d | 2026-02-27 13:00 | 2026-03-16 12:00 |  | 2026-02-27 13:00 | 2026-03-16 12:00 | 11d | 16.29d |  |  |  |  | 1,910 | 1,910 |
| 7 | 1.3.1 | Instalar canaletas |  | 2d | 2026-02-27 13:00 | 2026-03-03 12:00 | 2FS+1d | 2026-02-27 13:00 | 2026-03-03 12:00 | 2d | 9.94d | 0d |  |  |  | 230 | 230 |
| 8 | 1.3.2 | Instalar cables de red |  | 4d | 2026-03-03 13:00 | 2026-03-09 12:00 | 7 | 2026-03-03 13:00 | 2026-03-09 12:00 | 4d | 9.94d | 0d |  |  |  | 640 | 640 |
| 9 | 1.3.3 | Instalar tomas de red en los puntos de control |  | 3d | 2026-03-09 13:00 | 2026-03-12 12:00 | 8 | 2026-03-09 13:00 | 2026-03-12 12:00 | 3d | 9.94d | 0d |  |  |  | 580 | 580 |
| 10 | 1.3.4 | Montaje del armario de comunicaciones, pruebas y certificación de la red |  | 2d | 2026-03-12 13:00 | 2026-03-16 12:00 | 9, 18 | 2026-03-12 13:00 | 2026-03-16 12:00 | 2d | 9.94d | 0.75d |  |  |  | 460 | 460 |
| 11 | 1.4 | Montaje de terminales táctiles y cierre de puntos de control |  | 3.75d | 2026-03-26 09:55 | 2026-03-31 16:55 | 5, 10, 32 | 2026-03-17 10:00 | 2026-03-20 17:00 | 3.75d | 8.43d |  | Personal MEDIATEC (con reuniones) | Álvaro Nieto; Lucía Prieto | 60h | 12,344.4 | 12,318.88 |
| 12 | 2 | **II. Tornos de acceso** |  | 3d | 2026-02-26 13:00 | 2026-03-03 12:00 |  | 2026-02-26 13:00 | 2026-03-03 12:00 | 3d | 29.04d |  |  |  | 56h | 13,764.64 | 13,764.64 |
| 13 | 2.1 | Montaje de los 3 tornos |  | 2d | 2026-02-26 13:00 | 2026-03-02 12:00 | 2 | 2026-02-26 13:00 | 2026-03-02 12:00 | 2d | 22.69d | 0d |  | Operarios estructuras metálicas [200%] | 32h | 6,638 | 6,638 |
| 14 | 2.2 | Montaje de barreras y pasillos |  | 1d | 2026-03-02 13:00 | 2026-03-03 12:00 | 13 | 2026-03-02 13:00 | 2026-03-03 12:00 | 1d | 24.56d |  |  | Operarios estructuras metálicas [200%] | 16h | 1,424 | 1,424 |
| 15 | 2.3 | Integración de los 6 dispositivos NFC |  | 1d | 2026-03-02 13:00 | 2026-03-03 12:00 | 13 | 2026-03-02 13:00 | 2026-03-03 12:00 | 1d | 22.44d |  | Personal MEDIATEC (con reuniones) | Rubén Ferrer | 8h | 5,702.64 | 5,702.64 |
| 16 | 3 | **III. Infraestructura común y equipamiento** |  | 2d | 2026-02-17 08:00 | 2026-02-18 17:00 |  | 2026-02-17 08:00 | 2026-02-18 17:00 | 2d | 33.73d |  |  |  | 16h | 14,275.28 | 14,275.28 |
| 17 | 3.1 | Montaje y puesta a punto del servidor (incl. S.O.) |  | 2d | 2026-02-17 08:00 | 2026-02-18 17:00 |  | 2026-02-17 08:00 | 2026-02-18 17:00 | 2d | 29.56d |  | Personal MEDIATEC (con reuniones) | Rubén Ferrer | 16h | 6,035.28 | 6,035.28 |
| 18 | 3.2 | Suministro de armario, switches y patch panels | milestone | 0d | 2026-02-17 08:00 | 2026-02-17 08:00 |  | 2026-02-17 08:00 | 2026-02-17 08:00 | 0d | 27.06d | 17.25d | Personal MEDIATEC (con reuniones) |  |  | 8,240 | 8,240 |
| 19 | 4 | **IV. Desarrollo de la aplicación** |  | 45.11d | 2026-02-17 08:00 | 2026-04-23 08:55 |  | 2026-02-17 08:00 | 2026-04-01 16:30 | 31.94d | -9.39d | 0d |  |  | 694h | 20,250.15 | 20,179.56 |
| 20 | 4.1 | **Análisis** |  | 19.49d | 2026-02-17 08:00 | 2026-03-16 11:56 |  | 2026-02-17 08:00 | 2026-03-06 16:40 | 13.96d | -9.39d | 0d |  |  | 318h | 9,843.02 | 9,362.46 |
| 21 | 4.1.1 | 1 Definición del sistema |  | 8.38d | 2026-02-17 08:00 | 2026-02-27 13:03 |  | 2026-02-17 08:00 | 2026-02-20 14:20 | 3.67d | -9.26d | 0d | Personal MEDIATEC (con reuniones) | Álvaro Nieto | 88h | 2,651.56 | 2,566.08 |
| 22 | 4.1.2 | 2 Establecimiento de requisitos |  | 4.57d | 2026-02-26 13:03 | 2026-03-05 08:38 | 21FS-1d | 2026-02-20 14:20 | 2026-02-24 15:20 | 2d | -6.55d | 0d | Personal MEDIATEC (con reuniones) | Diego Manzano | 48h | 1,562.9 | 1,399.68 |
| 23 | 4.1.3 | 3 Modelado de casos de uso e interfaces |  | 6.29d | 2026-02-27 13:03 | 2026-03-09 16:21 | 21 | 2026-02-24 15:20 | 2026-02-27 13:20 | 2.75d | -9.26d | 0d | Personal MEDIATEC (con reuniones) | Lucía Prieto | 66h | 2,006.83 | 1,924.56 |
| 24 | 4.1.4 | 4 Análisis de clases |  | 5.14d | 2026-02-27 13:03 | 2026-03-06 14:12 | 21 | 2026-02-27 13:20 | 2026-03-03 15:20 | 2.25d | -8.12d | 0d | Personal MEDIATEC (con reuniones) | Álvaro Nieto | 54h | 1,627.07 | 1,624.66 |
| 25 | 4.1.5 | 5 Análisis de consistencia |  | 3.24d | 2026-03-09 16:21 | 2026-03-13 09:16 | 22, 23, 24 | 2026-03-03 15:20 | 2026-03-05 09:40 | 1.42d | -9.26d | 0d | Personal MEDIATEC (con reuniones) | Diego Manzano | 34h | 1,147.12 | 1,030.99 |
| 26 | 4.1.6 | 6 Aprobación del análisis |  | 1.33d | 2026-03-13 09:16 | 2026-03-16 11:56 | 25 | 2026-03-05 09:40 | 2026-03-06 16:40 | 1.75d | -9.26d | 0d | Personal MEDIATEC (con reuniones) | Lucía Prieto; Álvaro Nieto | 28h | 847.55 | 816.48 |

Notes:
- 2: Coste fijo = Soporte metálico 240 x 8.20 €
- 11: Coste fijo = Terminal táctil NFC 240 x 44.00 € / Predecesoras: 5 (corriente) y 10 (red certificada), exigidas por el enunciado (apdo. I.4). Vínculo adicional con el hito 'Cierre del diseño': vínculo de recurso, porque Álvaro y Lucía (personal propio que monta los terminales) están en las tareas de diseño 8, 9 y 10 hasta ese hito. Cierre en bloque (no progresivo): la tarea tiene más de 8 días de margen, por lo que el cierre progresivo no adelantaría la entrega.
- 13: Coste fijo = Torno bidireccional 3 x 1850.00 €
- 14: Coste fijo = Barreras y pasillos metálicos 1 x 880.00 €
- 15: Coste fijo = Dispositivo NFC torno 6 x 920.00 €
- 17: Coste fijo 300 €: suplemento de transporte especial del servidor / Coste fijo = Ordenador servidor 1 x 4500.00 € + Windows Server 2022 1 x 870.00 € + 300.00 €
- 18: Coste fijo = Switch 48p gestionable 6 x 1040.00 € + Patch panel 48p 6 x 210.00 € + Armario 24U 1 x 740.00 €
- 22: Escenario B: Requisitos lo realiza Diego, distinto del analista de la tarea 1 (Álvaro), por lo que el solape FC-1 día del enunciado se ejecuta realmente.
- 23: Escenario B: solo predecesora 1 (enunciado). Analista: Lucía.
- 24: Escenario B: solo predecesora 1 (enunciado). Analista: Álvaro (libre al terminar la tarea 1).

| ID | WBS | Task | Type | Duration | Start | Finish | Predecessors | Baseline start | Baseline finish | Baseline duration | Total slack | Free slack | Constraint | Deadline | Calendar | Resources | Work | Cost | Baseline cost |
| --- | --- | --- | --- | --- | --- | --- | --- | --- | --- | --- | --- | --- | --- | --- | --- | --- | --- | --- | --- |
| 27 | 4.2 | **Diseño** |  | 7.75d | 2026-03-16 11:56 | 2026-03-26 09:55 |  | 2026-03-06 16:40 | 2026-03-17 10:00 | 6.29d | -9.39d | 0d |  |  |  |  | 174h | 5,401.88 | 5,080.43 |
| 28 | 4.2.1 | 7 Definición de la arquitectura del sistema |  | 3.24d | 2026-03-16 11:56 | 2026-03-19 14:51 | 26 | 2026-03-06 16:40 | 2026-03-10 12:00 | 1.42d | -9.26d | 0d |  |  | Personal MEDIATEC (con reuniones) | Diego Manzano | 34h | 1,147.12 | 1,030.99 |
| 29 | 4.2.2 | 8 Diseño de clases |  | 2.86d | 2026-03-19 14:51 | 2026-03-24 14:43 | 28 | 2026-03-10 13:00 | 2026-03-16 10:00 | 3.75d | -9.26d | 0d |  |  | Personal MEDIATEC (con reuniones) | Álvaro Nieto; Rubén Ferrer | 50h | 1,403.44 | 1,331.4 |
| 30 | 4.2.3 | 9 Diseño de los datos |  | 2.86d | 2026-03-19 14:51 | 2026-03-24 14:43 | 28 | 2026-03-10 13:00 | 2026-03-16 10:00 | 3.75d | -9.26d | 0d |  |  | Personal MEDIATEC (con reuniones) | Lucía Prieto; Diego Manzano | 58h | 1,890.48 | 1,789 |
| 31 | 4.2.4 | 10 Verificación del diseño |  | 1.52d | 2026-03-24 14:43 | 2026-03-26 09:55 | 29, 30 | 2026-03-16 10:00 | 2026-03-17 10:00 | 1d | -9.26d | 0d |  |  | Personal MEDIATEC (con reuniones) | Diego Manzano; Rubén Ferrer; Álvaro Nieto | 32h | 960.83 | 929.04 |
| 32 | 4.2.5 | HITO: Cierre del diseño | milestone | 0d | 2026-03-26 09:55 | 2026-03-26 09:55 | 31 | 2026-03-17 10:00 | 2026-03-17 10:00 | 0d | -9.26d | 0d |  |  | Personal MEDIATEC (con reuniones) |  |  |  |  |
| 33 | 4.3 | **Construcción** |  | 11.27d | 2026-03-26 09:55 | 2026-04-14 13:06 |  | 2026-03-17 10:00 | 2026-03-26 14:30 | 7.44d | -9.39d | 0d |  |  |  |  | 134h | 3,357.44 | 3,812.27 |
| 34 | 4.3.1 | 11 Codificación del módulo de escritorio |  | 4.19d | 2026-03-26 09:55 | 2026-04-01 11:27 | 32 | 2026-03-17 10:00 | 2026-03-19 17:00 | 2.75d | -9.26d | 0d |  |  | Personal MEDIATEC (con reuniones) | Rubén Ferrer | 44h | 1,066.21 | 1,220.56 |
| 35 | 4.3.2 | 12 Codificación del módulo web |  | 2.48d | 2026-04-01 11:27 | 2026-04-08 08:16 | 34 | 2026-03-20 08:00 | 2026-03-23 15:00 | 1.62d | -9.26d | 0d |  |  | Personal MEDIATEC (con reuniones) | Rubén Ferrer | 26h | 630.03 | 735.8 |
| 36 | 4.3.3 | 13 Integración del sistema |  | 2.86d | 2026-04-08 08:16 | 2026-04-10 16:08 | 34, 35 | 2026-03-23 15:00 | 2026-03-25 14:00 | 1.88d | -9.26d | 0d |  |  | Personal MEDIATEC (con reuniones) | Rubén Ferrer | 30h | 726.95 | 849 |
| 37 | 4.3.4 | 14 Aprobación del sistema |  | 1.62d | 2026-04-10 16:08 | 2026-04-14 13:06 | 36 | 2026-03-25 14:00 | 2026-03-26 14:30 | 1.06d | -9.26d | 0d |  |  | Personal MEDIATEC (con reuniones) | Rubén Ferrer; Álvaro Nieto | 34h | 934.26 | 1,006.91 |
| 38 | 4.3.5 | HITO: Aprobación del sistema | milestone | 0d | 2026-04-14 13:06 | 2026-04-14 13:06 | 37 | 2026-03-26 14:30 | 2026-03-26 14:30 | 0d | -9.26d | 0d |  |  | Personal MEDIATEC (con reuniones) |  |  |  |  |
| 39 | 4.4 | **Pruebas** |  | 6.6d | 2026-04-14 13:06 | 2026-04-23 08:55 |  | 2026-03-26 14:30 | 2026-04-01 16:30 | 4.25d | -9.39d | 0d |  |  |  |  | 68h | 1,647.81 | 1,924.4 |
| 40 | 4.4.1 | 15 Ejecución de pruebas unitarias |  | 3.81d | 2026-04-14 13:06 | 2026-04-20 11:35 | 38 | 2026-03-26 14:30 | 2026-03-31 09:30 | 2.5d | -9.26d | 0d |  |  | Personal MEDIATEC (con reuniones) | Rubén Ferrer | 40h | 969.29 | 1,132 |
| 41 | 4.4.2 | 16 Ejecución de las pruebas de integración |  | 2.67d | 2026-04-20 11:35 | 2026-04-23 08:55 | 40 | 2026-03-31 09:30 | 2026-04-01 16:30 | 1.75d | -9.26d | 0d |  |  | Personal MEDIATEC (con reuniones) | Rubén Ferrer | 28h | 678.52 | 792.4 |
| 42 | 5 | **V. Instalación del software y prueba del sistema** |  | 9.27d | 2026-04-23 08:55 | 2026-05-07 11:06 |  | 2026-04-01 16:30 | 2026-04-09 08:30 | 3.12d | -9.39d | 0d |  |  |  |  | 96h | 2,326.19 | 2,785.92 |
| 43 | 5.1 | 17 Instalación y configuración de la aplicación en el servidor |  | 12.2h | 2026-04-23 08:55 | 2026-04-24 14:07 | 41, 17 | 2026-04-01 16:30 | 2026-04-06 13:30 | 4h | -9.26d | 0d |  |  | Personal MEDIATEC (con reuniones) | Rubén Ferrer | 16h | 387.69 | 464.32 |
| 44 | 5.2 | 18 Carga de datos maestros y alta de tarjetas NFC |  | 18.3h | 2026-04-24 14:07 | 2026-04-28 16:25 | 43 | 2026-04-06 13:30 | 2026-04-07 10:30 | 6h | -9.26d | 0d |  |  | Personal MEDIATEC (con reuniones) | Rubén Ferrer | 24h | 581.53 | 696.48 |
| 45 | 5.3 | 19 Pruebas integradas del sistema en las instalaciones del cliente |  | 3.05d | 2026-04-28 16:25 | 2026-05-05 08:48 | 44, 11, 15 | 2026-04-07 10:30 | 2026-04-08 10:30 | 1d | -9.26d | 0d |  |  | Personal MEDIATEC (con reuniones) | Rubén Ferrer | 32h | 775.44 | 928.64 |
| 46 | 5.4 | 20 Formación al personal y puesta en marcha |  | 18.3h | 2026-05-05 08:48 | 2026-05-07 11:06 | 45 | 2026-04-08 10:30 | 2026-04-09 08:30 | 6h | -9.26d | 0d |  |  | Personal MEDIATEC (con reuniones) | Rubén Ferrer | 24h | 581.53 | 696.48 |
| 47 | 6 | HITO: Entrega del proyecto | milestone | 0d | 2026-05-07 11:06 | 2026-05-07 11:06 | 46 | 2026-04-09 08:30 | 2026-04-09 08:30 | 0d | -9.26d | 0d |  | 2026-04-22 17:00 | Personal MEDIATEC (con reuniones) |  |  |  |  |
| 48 | 7 | **Reuniones de seguimiento (quincenales)** |  | 47.5d | 2026-02-23 08:00 | 2026-05-04 12:00 |  | 2026-02-23 08:00 | 2026-04-06 12:00 | 28.5d | 2.89d |  |  |  |  |  | 48h | 3,047.55 | 2,027.47 |
| 49 | 7.1 | Reunión 1: preparación (JP) |  | 2h | 2026-02-23 08:00 | 2026-02-23 10:00 |  | 2026-02-23 08:00 | 2026-02-23 10:00 | 2h | 30.81d |  | start no earlier than 2026-02-23 08:00 |  |  | Marta Salas | 2h | 58.32 | 58.32 |
| 50 | 7.2 | Reunión de seguimiento 1 |  | 1h | 2026-02-23 10:00 | 2026-02-23 11:00 |  | 2026-02-23 10:00 | 2026-02-23 11:00 | 1h | 30.69d |  | start no earlier than 2026-02-23 10:00 |  |  | Marta Salas; Álvaro Nieto; Lucía Prieto; Diego Manzano; Rubén Ferrer | 5h | 414.47 | 414.47 |
| 51 | 7.3 | Reunión 1: análisis (JP) |  | 1h | 2026-02-23 11:00 | 2026-02-23 12:00 |  | 2026-02-23 11:00 | 2026-02-23 12:00 | 1h | 30.56d |  | start no earlier than 2026-02-23 11:00 |  |  | Marta Salas | 1h | 29.16 | 29.16 |
| 52 | 7.4 | Reunión 2: preparación (JP) |  | 2h | 2026-03-09 08:00 | 2026-03-09 10:00 |  | 2026-03-09 08:00 | 2026-03-09 10:00 | 2h | 20.81d |  | start no earlier than 2026-03-09 08:00 |  |  | Marta Salas | 2h | 58.32 | 58.32 |
| 53 | 7.5 | Reunión de seguimiento 2 |  | 1h | 2026-03-09 10:00 | 2026-03-09 11:00 |  | 2026-03-09 10:00 | 2026-03-09 11:00 | 1h | 20.69d |  | start no earlier than 2026-03-09 10:00 |  |  | Marta Salas; Álvaro Nieto; Lucía Prieto; Diego Manzano; Rubén Ferrer | 5h | 417.96 | 417.96 |
| 54 | 7.6 | Reunión 2: análisis (JP) |  | 1h | 2026-03-09 11:00 | 2026-03-09 12:00 |  | 2026-03-09 11:00 | 2026-03-09 12:00 | 1h | 20.56d |  | start no earlier than 2026-03-09 11:00 |  |  | Marta Salas | 1h | 29.16 | 29.16 |
| 55 | 7.7 | Reunión 3: preparación (JP) |  | 2h | 2026-03-23 08:00 | 2026-03-23 10:00 |  | 2026-03-23 08:00 | 2026-03-23 10:00 | 2h | 10.81d |  | start no earlier than 2026-03-23 08:00 |  |  | Marta Salas | 2h | 59.48 | 59.48 |
| 56 | 7.8 | Reunión de seguimiento 3 |  | 1h | 2026-03-23 10:00 | 2026-03-23 11:00 |  | 2026-03-23 10:00 | 2026-03-23 11:00 | 1h | 10.69d |  | start no earlier than 2026-03-23 10:00 |  |  | Marta Salas; Álvaro Nieto; Lucía Prieto; Diego Manzano; Rubén Ferrer | 5h | 420.82 | 420.82 |
| 57 | 7.9 | Reunión 3: análisis (JP) |  | 1h | 2026-03-23 11:00 | 2026-03-23 12:00 |  | 2026-03-23 11:00 | 2026-03-23 12:00 | 1h | 10.56d |  | start no earlier than 2026-03-23 11:00 |  |  | Marta Salas | 1h | 29.74 | 29.74 |
| 58 | 7.10 | Reunión 4: preparación (JP) |  | 2h | 2026-04-06 08:00 | 2026-04-06 10:00 |  | 2026-04-06 08:00 | 2026-04-06 10:00 | 2h | 2.81d |  | start no earlier than 2026-04-06 08:00 |  |  | Marta Salas | 2h | 59.48 | 59.48 |
| 59 | 7.11 | Reunión de seguimiento 4 |  | 1h | 2026-04-06 10:00 | 2026-04-06 11:00 |  | 2026-04-06 10:00 | 2026-04-06 11:00 | 1h | 2.69d |  | start no earlier than 2026-04-06 10:00 |  |  | Marta Salas; Álvaro Nieto; Lucía Prieto; Diego Manzano; Rubén Ferrer | 5h | 420.82 | 420.82 |
| 60 | 7.12 | Reunión 4: análisis (JP) |  | 1h | 2026-04-06 11:00 | 2026-04-06 12:00 |  | 2026-04-06 11:00 | 2026-04-06 12:00 | 1h | 2.56d |  | start no earlier than 2026-04-06 11:00 |  |  | Marta Salas | 1h | 29.74 | 29.74 |
| 61 | 7.13 | Reunión 5: preparación (JP) |  | 0.25d | 2026-04-20 08:00 | 2026-04-20 10:00 |  |  |  |  | 29.25d |  | start no earlier than 2026-04-20 08:00 |  |  | Marta Salas | 2h | 59.48 |  |
| 62 | 7.14 | Reunión de seguimiento 5 |  | 0.12d | 2026-04-20 10:00 | 2026-04-20 11:00 |  |  |  |  | 29.12d |  | start no earlier than 2026-04-20 10:00 |  |  | Marta Salas; Álvaro Nieto; Lucía Prieto; Diego Manzano; Rubén Ferrer | 5h | 420.82 |  |
| 63 | 7.15 | Reunión 5: análisis (JP) |  | 0.12d | 2026-04-20 11:00 | 2026-04-20 12:00 |  |  |  |  | 29d |  | start no earlier than 2026-04-20 11:00 |  |  | Marta Salas | 1h | 29.74 |  |
| 64 | 7.16 | Reunión 6: preparación (JP) |  | 0.25d | 2026-05-04 08:00 | 2026-05-04 10:00 |  |  |  |  | 20.25d |  | start no earlier than 2026-05-04 08:00 |  |  | Marta Salas | 2h | 59.48 |  |
| 65 | 7.17 | Reunión de seguimiento 6 |  | 0.12d | 2026-05-04 10:00 | 2026-05-04 11:00 |  |  |  |  | 20.12d |  | start no earlier than 2026-05-04 10:00 |  |  | Marta Salas; Álvaro Nieto; Lucía Prieto; Diego Manzano; Rubén Ferrer | 5h | 420.82 |  |
| 66 | 7.18 | Reunión 6: análisis (JP) |  | 0.12d | 2026-05-04 11:00 | 2026-05-04 12:00 |  |  |  |  | 20d |  | start no earlier than 2026-05-04 11:00 |  |  | Marta Salas | 1h | 29.74 |  |

Notes:
- 32: Hito del enunciado (apdo. IV, Notas). Sucesoras: 11 y montaje de terminales.
- 38: Hito del enunciado (apdo. IV, Notas). Sucesora: 15.
- 50: Coste fijo 275 €: catering y breakfast
- 53: Coste fijo 275 €: catering y breakfast
- 56: Coste fijo 275 €: catering y breakfast
- 59: Coste fijo 275 €: catering y breakfast
- 62: Coste fijo 275 €: catering y breakfast
- 65: Coste fijo 275 €: catering y breakfast
