# CURASIERRA - Punto 2 (contratación + horas extra) - seguimiento a 20/11/2026

Schedule from MS Project, 2026-11-05 to 2027-01-18, status date 2026-11-20, costs in €, A marks actual dates.
SIERRASOFT

## Calendars

- ETSI UHU 2026-27: Mon-Fri 08:00-12:00, 13:00-17:00; Sat-Sun off. Exceptions (off unless hours are given): 2026-12-07 (Día de la Constitución), 2026-12-08 (Inmaculada Concepción), 2026-12-23 to 2027-01-06 (Vacaciones de Navidad (ETSI)).

## Resources

| Resource | Group | Rate | Notes |
| --- | --- | --- | --- |
| RespArea | JP, W, D, P, A, T | 42.3 | Roles: JP, W, D, P, A, T. Salario bruto anual 56,358.00 €. Coste hora empresa = salario × 1,33 / 1.772 h = 42.30 €/h. Hora extra +18 % = 49.91 €/h. |
| AnalistaWeb | W, P, A, T | 32.81 | Roles: W, P, A, T. Salario bruto anual 43,715.10 €. Coste hora empresa = salario × 1,33 / 1.772 h = 32.81 €/h. Hora extra +18 % = 38.72 €/h. |
| AnalistaBD | D, P, A, T | 29.83 | Roles: D, P, A, T. Salario bruto anual 39,741.00 €. Coste hora empresa = salario × 1,33 / 1.772 h = 29.83 €/h. Hora extra +18 % = 35.20 €/h. |
| AnalistaApp | P, A, T | 26.85 | Roles: P, A, T. Salario bruto anual 35,766.90 €. Coste hora empresa = salario × 1,33 / 1.772 h = 26.85 €/h. Hora extra +18 % = 31.68 €/h. |
| Administrativa | Adm | 19.91 | Roles: Adm. Salario bruto anual 26,528.00 €. Coste hora empresa = salario × 1,33 / 1.772 h = 19.91 €/h. Hora extra +26 % = 25.09 €/h. |
| ProgramadorJr | P, T | 16.35 | Roles: P, T. Salario bruto anual 21,785.40 €. Coste hora empresa = salario × 1,33 / 1.772 h = 16.35 €/h. Hora extra +20 % = 19.62 €/h. |
| ProgramadorJr2 | P, T | 16.35 | Roles: P, T. Salario bruto anual 21,785.40 €. Coste hora empresa = salario × 1,33 / 1.772 h = 16.35 €/h. Hora extra +20 % = 19.62 €/h. Nuevo recurso incorporado el 23/11/2026 (perfil ProgramadorJr); asignable desde el 30/11/2026 tras 5 días de preparación. |

## Schedule

| ID | WBS | Task | Duration | Start | Finish | Predecessors | Complete | Remaining | Baseline start | Baseline finish | Baseline duration | Total slack | Free slack | Constraint | Resources | Work | Actual work | Cost | Baseline cost | Actual cost |
| --- | --- | --- | --- | --- | --- | --- | --- | --- | --- | --- | --- | --- | --- | --- | --- | --- | --- | --- | --- | --- |
| 1 | 1 | **Captura de necesidades de los usuarios** | 4d | 2026-11-10 A | 2026-11-13 A |  | 100% |  | 2026-11-10 | 2026-11-13 | 4d |  |  |  |  | 48h | 48h | 1,583.68 | 1,583.68 | 1,583.68 |
| 2 | 1.1 | Toma de requisitos de usuario | 2d | 2026-11-10 A | 2026-11-11 A |  | 100% |  | 2026-11-10 | 2026-11-11 | 2d |  |  |  | AnalistaApp; AnalistaBD | 32h | 32h | 906.88 | 906.88 | 906.88 |
| 3 | 1.2 | Validación de los requisitos de usuario | 2d | 2026-11-12 A | 2026-11-13 A | 2 | 100% |  | 2026-11-12 | 2026-11-13 | 2d |  |  |  | RespArea | 16h | 16h | 676.8 | 676.8 | 676.8 |
| 4 | 2 | **Análisis de requisitos del software** | 15d | 2026-11-05 A | 2026-11-25 |  | 83% | 2.5d | 2026-11-05 | 2026-11-16 | 8d | 0d |  |  |  | 296h | 232h | 8,002.4 | 3,852.4 | 6,488.32 |
| 5 | 2.1 | Estudio de los requisitos software | 2d | 2026-11-05 A | 2026-11-06 A |  | 100% |  | 2026-11-05 | 2026-11-06 | 2d |  |  |  | AnalistaApp; AnalistaBD; AnalistaWeb | 40h | 40h | 1,169.36 | 1,169.36 | 1,169.36 |
| 6 | 2.2 | Validación de los requisitos software | 3d | 2026-11-09 A | 2026-11-11 A | 5 | 100% |  | 2026-11-09 | 2026-11-11 | 3d |  |  |  | RespArea | 24h | 24h | 1,015.2 | 1,015.2 | 1,015.2 |
| 7 | 2.3 | Instalación del software necesario en los equipos | 8d | 2026-11-12 A | 2026-11-24 | 6 | 75% | 2d | 2026-11-12 | 2026-11-12 | 1d | 0d |  |  | AnalistaApp; AnalistaBD; ProgramadorJr | 176h | 128h | 4,734.24 | 584.24 | 3,565.76 |
| 8 | 2.4 | Preparación de los puestos de trabajo | 1d | 2026-11-25 | 2026-11-25 | 7 |  |  | 2026-11-13 | 2026-11-13 | 1d | 0d |  |  | AnalistaApp; ProgramadorJr | 16h |  | 345.6 | 345.6 |  |
| 9 | 2.5 | Preparación del servidor de desarrollo | 3d | 2026-11-09 A | 2026-11-11 A | 5 | 100% |  | 2026-11-09 | 2026-11-11 | 3d |  |  |  | AnalistaApp; ProgramadorJr | 32h | 32h | 607.2 | 607.2 | 607.2 |
| 10 | 2.6 | Preparación del servidor de preexplotación | 1d | 2026-11-16 A | 2026-11-16 A | 5 | 100% |  | 2026-11-16 | 2026-11-16 | 1d |  |  |  | ProgramadorJr | 8h | 8h | 130.8 | 130.8 | 130.8 |
| 11 | 3 | **Análisis de requisitos del sistema** | 2d | 2026-11-16 A | 2026-11-17 A |  | 100% |  | 2026-11-16 | 2026-11-17 | 2d |  |  |  |  | 48h | 48h | 1,399.92 | 1,399.92 | 1,399.92 |
| 12 | 3.1 | Estimación del hardware necesario | 1d | 2026-11-16 A | 2026-11-16 A | 3 | 100% |  | 2026-11-16 | 2026-11-16 | 1d |  |  |  | AnalistaApp; AnalistaBD; AnalistaWeb | 24h | 24h | 715.92 | 715.92 | 715.92 |
| 13 | 3.2 | Validación del hardware necesario | 1d | 2026-11-17 A | 2026-11-17 A | 12 | 100% |  | 2026-11-17 | 2026-11-17 | 1d |  |  |  | AnalistaApp; ProgramadorJr; RespArea | 24h | 24h | 684 | 684 | 684 |
| 14 | 4 | **Diseño preliminar** | 13d | 2026-11-26 | 2026-12-16 |  |  |  | 2026-11-18 | 2026-11-30 | 9d | 0d |  |  |  | 112h |  | 3,855.34 | 3,839.76 |  |
| 15 | 4.1 | Diseño de los datos y procesos | 7d | 2026-11-26 | 2026-12-04 | 1, 4, 11 |  |  | 2026-11-18 | 2026-11-27 | 8d | 0d |  |  | AnalistaBD; RespArea | 96h |  | 3,278.3 | 3,262.72 |  |
| 16 | 4.2 | Diseño del plan de pruebas | 1d | 2026-12-16 | 2026-12-16 | 15 |  |  | 2026-11-30 | 2026-11-30 | 1d | 12d |  | start no earlier than 2026-12-16 | AnalistaBD; RespArea | 16h |  | 577.04 | 577.04 |  |
| 17 | 5 | **Diseño detallado** | 18d | 2026-12-09 | 2027-01-18 |  |  |  | 2026-11-30 | 2027-01-18 | 23d | 0d |  |  |  | 136h |  | 3,543.84 | 3,589.2 |  |
| 18 | 5.1 | Diseño gráfico de la aplicación | 5d | 2026-12-10 | 2026-12-16 | 15 |  |  | 2026-12-01 | 2026-12-09 | 5d | 12d |  | start no earlier than 2026-12-10 | AnalistaWeb | 40h |  | 1,312.4 | 1,312.4 |  |
| 19 | 5.2 | **Diseño técnico de componentes** | 18d | 2026-12-09 | 2027-01-18 |  |  |  | 2026-11-30 | 2027-01-18 | 23d | 0d |  |  |  | 96h |  | 2,231.44 | 2,276.8 |  |
| 20 | 5.2.1 | Presentación | 1d | 2026-12-09 | 2026-12-09 | 15 |  |  | 2026-11-30 | 2026-11-30 | 1d | 17d |  |  | AnalistaWeb | 8h |  | 262.48 | 262.48 |  |
| 21 | 5.2.2 | Mantenimiento de industrias y secaderos | 2d | 2026-12-09 | 2026-12-10 | 15 |  |  | 2026-12-01 | 2026-12-02 | 2d | 16d |  |  | AnalistaApp | 16h |  | 429.6 | 477.28 |  |
| 22 | 5.2.3 | Mantenimiento de lotes, precintos, curaciones y salidas | 4d | 2026-12-15 | 2026-12-18 | 15 |  |  | 2026-12-21 | 2027-01-07 | 3d | 10d |  | start no earlier than 2026-12-15 | AnalistaApp | 32h |  | 859.2 | 883.04 |  |
| 23 | 5.2.4 | Verificación de precintos y geolocalización | 2d | 2027-01-15 | 2027-01-18 | 15, 43 |  |  | 2027-01-12 | 2027-01-18 | 5d | 0d |  | start no earlier than 2027-01-15 | ProgramadorJr2; ProgramadorJr | 40h |  | 680.16 | 654 |  |
| 24 | 6 | **Diseño de la base de datos** | 5d | 2026-12-09 | 2026-12-15 |  |  |  | 2026-12-03 | 2026-12-11 | 5d | 10d |  |  |  | 48h |  | 1,531.6 | 1,531.6 |  |
| 25 | 6.1 | Diseño de tablas y relaciones | 3d | 2026-12-09 | 2026-12-11 | 15 |  |  | 2026-12-03 | 2026-12-09 | 3d | 10d | 0d |  | AnalistaBD | 24h |  | 715.92 | 715.92 |  |
| 26 | 6.2 | Validación del diseño de la BD | 2d | 2026-12-14 | 2026-12-15 | 25 |  |  | 2026-12-10 | 2026-12-11 | 2d | 10d | 8d |  | AnalistaBD; RespArea | 24h |  | 815.68 | 815.68 |  |

Notes:
- 2: Rol A. Nominal: 4 días. Asignación: AnalistaApp 16 h; AnalistaBD 16 h. Completada a 20/11/2026 según lo previsto.
- 3: Rol JP. Nominal: 2 días. Asignación: RespArea 16 h. Completada a 20/11/2026 según lo previsto.
- 5: Rol A. Nominal: 5 días. Asignación: AnalistaApp 16 h; AnalistaBD 16 h; AnalistaWeb 8 h. Completada a 20/11/2026 según lo previsto.
- 6: Rol JP. Nominal: 3 días. Asignación: RespArea 24 h. Completada a 20/11/2026 según lo previsto.
- 7: Rol T. Nominal: 3 días. Asignación: AnalistaApp 56 h; AnalistaBD 64 h; ProgramadorJr 56 h. Incidencia: actualización del SDK de Flutter y sustitución de paquetes de terceros. Trabajo real 12/11-20/11 en los días libres de cada recurso; quedan 2 días (23-24/11). Costo fijo 405.92 € para que la desviación a 20/11 sea la indicada (4.150 €).
- 8: Rol T. Nominal: 2 días. Asignación: AnalistaApp 8 h; ProgramadorJr 8 h.
- 9: Rol T. Nominal: 32 h. Asignación: AnalistaApp 8 h; ProgramadorJr 24 h. Completada a 20/11/2026 según lo previsto.
- 10: Rol T. Nominal: 1 día. Asignación: ProgramadorJr 8 h. Completada a 20/11/2026 según lo previsto.
- 12: Rol A. Nominal: 24 h. Asignación: AnalistaApp 8 h; AnalistaBD 8 h; AnalistaWeb 8 h. Completada a 20/11/2026 según lo previsto.
- 13: Rol T(16 h) + JP(8 h). Nominal: 24 h. Asignación: AnalistaApp 8 h; ProgramadorJr 8 h; RespArea 8 h. Completada a 20/11/2026 según lo previsto.
- 15: Rol D. Nominal: 12 días. Asignación: AnalistaBD 56 h + 14 h extra; RespArea 24 h + 2 h extra.
- 16: Rol D(1 día) + JP(1 día). Nominal: 2 días. Asignación: AnalistaBD 8 h; RespArea 8 h. Restricción 'No comenzar antes del' 16/12/2026 por disponibilidad de recursos.
- 18: Rol W. Nominal: 5 días. Asignación: AnalistaWeb 40 h. Restricción 'No comenzar antes del' 10/12/2026 por disponibilidad de recursos.
- 20: Rol W. Nominal: 1 día. Asignación: AnalistaWeb 8 h.
- 21: Rol P. Nominal: 2 días. Asignación: AnalistaApp 16 h.
- 22: Rol P. Nominal: 4 días. Asignación: AnalistaApp 32 h. Restricción 'No comenzar antes del' 15/12/2026 por disponibilidad de recursos.
- 23: Rol P. Nominal: 5 días. Asignación: ProgramadorJr2 16 h + 4 h extra; ProgramadorJr 16 h + 4 h extra. Restricción 'No comenzar antes del' 15/01/2027 por disponibilidad de recursos.
- 25: Rol D. Nominal: 3 días. Asignación: AnalistaBD 24 h.
- 26: Rol D(2 días) + JP(1 día). Nominal: 3 días. Asignación: AnalistaBD 16 h; RespArea 8 h.

| ID | WBS | Task | Type | Duration | Start | Finish | Predecessors | Baseline start | Baseline finish | Baseline duration | Total slack | Free slack | Constraint | Deadline | Resources | Work | Cost | Baseline cost |
| --- | --- | --- | --- | --- | --- | --- | --- | --- | --- | --- | --- | --- | --- | --- | --- | --- | --- | --- |
| 27 | 7 | **Construcción** |  | 20d | 2026-12-01 | 2027-01-14 |  | 2026-11-23 | 2026-12-21 | 19d | 2d |  |  |  |  | 312h | 5,665.68 | 6,900.4 |
| 28 | 7.1 | Construcción del prototipo |  | 2d | 2026-12-01 | 2026-12-02 | 15SS+5ed, 43 | 2026-11-23 | 2026-11-25 | 3d | 20d |  |  |  | ProgramadorJr2; ProgramadorJr | 24h | 392.4 | 392.4 |
| 29 | 7.2 | Construcción de la BD |  | 3d | 2027-01-12 | 2027-01-14 | 26, 43 | 2026-12-14 | 2026-12-18 | 5d | 2d |  | start no earlier than 2027-01-12 |  | AnalistaBD; ProgramadorJr2 | 40h | 977.52 | 1,193.2 |
| 30 | 7.3 | Codificación |  | 12d | 2026-12-03 | 2026-12-22 | 15FS-2ed, 43 | 2026-11-26 | 2026-12-21 | 16d | 0d |  |  |  | AnalistaApp; ProgramadorJr2; ProgramadorJr | 248h | 4,295.76 | 5,314.8 |
| 31 | 8 | **Pruebas** |  | 5d | 2027-01-07 | 2027-01-13 |  | 2026-12-22 | 2027-01-13 | 6d | 0d |  |  |  |  | 96h | 1,847.76 | 2,336.96 |
| 32 | 8.1 | Pruebas unitarias |  | 1d | 2027-01-07 | 2027-01-07 | 30, 43 | 2026-12-22 | 2027-01-07 | 2d | 0d |  |  |  | AnalistaApp; ProgramadorJr2; ProgramadorJr | 24h | 476.4 | 500.24 |
| 33 | 8.2 | Pruebas de integración |  | 1d | 2027-01-08 | 2027-01-08 | 32, 43 | 2027-01-08 | 2027-01-08 | 1d | 0d |  |  |  | ProgramadorJr2; ProgramadorJr | 16h | 261.6 | 345.6 |
| 34 | 8.3 | Pruebas de sistema |  | 3d | 2027-01-11 | 2027-01-13 | 33, 43 | 2027-01-11 | 2027-01-13 | 3d | 0d |  |  |  | AnalistaApp; ProgramadorJr2; ProgramadorJr | 56h | 1,109.76 | 1,491.12 |
| 35 | 9 | **Demostración a los usuarios** |  | 3d | 2027-01-14 | 2027-01-18 |  | 2027-01-14 | 2027-01-18 | 3d | 0d |  |  |  |  | 48h | 1,244.4 | 1,460.08 |
| 36 | 9.1 | Formación de los usuarios |  | 2d | 2027-01-14 | 2027-01-15 | 34, 43 | 2027-01-14 | 2027-01-15 | 2d | 0d |  |  |  | AnalistaApp; ProgramadorJr2; ProgramadorJr | 32h | 691.2 | 906.88 |
| 37 | 9.2 | Validación del producto por los usuarios |  | 1d | 2027-01-18 | 2027-01-18 | 36 | 2027-01-18 | 2027-01-18 | 1d | 0d |  |  |  | AnalistaApp; RespArea | 16h | 553.2 | 553.2 |
| 38 | 10 | **Documentación** |  | 18d | 2026-12-09 | 2027-01-18 |  | 2026-12-04 | 2027-01-18 | 19d | 0d |  |  |  |  | 120h | 2,389.2 | 2,389.2 |
| 39 | 10.1 | Documentación técnica del proyecto |  | 10d | 2026-12-09 | 2026-12-22 | 30FF | 2026-12-04 | 2026-12-21 | 10d | 8d |  |  |  | Administrativa | 80h | 1,592.8 | 1,592.8 |
| 40 | 10.2 | Documentación de usuarios |  | 5d | 2027-01-12 | 2027-01-18 | 33FS+3ed | 2027-01-12 | 2027-01-18 | 5d | 0d |  |  |  | Administrativa | 40h | 796.4 | 796.4 |
| 41 | 11 | Hito: Entrega del diseño de la aplicación | milestone | 0d | 2027-01-18 | 2027-01-18 | 14, 17, 24 | 2027-01-18 | 2027-01-18 | 0d | 0d |  |  |  |  |  |  |  |
| 42 | 12 | Hito: Aceptación del producto por parte del cliente | milestone | 0d | 2027-01-18 | 2027-01-18 | 37 | 2027-01-18 | 2027-01-18 | 0d | 0d |  |  | 2027-01-18 |  |  |  |  |
| 43 | 13 | Preparación del nuevo recurso (ProgramadorJr2) |  | 5d | 2026-11-23 | 2026-11-27 |  |  |  |  | 3d | 1d | start no earlier than 2026-11-23 |  | ProgramadorJr2 | 40h | 654 |  |

Notes:
- 28: Rol P. Nominal: 3 días. Asignación: ProgramadorJr2 16 h; ProgramadorJr 8 h.
- 29: Rol D(3 días) + P(2 días). Nominal: 5 días. Asignación: AnalistaBD 24 h; ProgramadorJr2 16 h. Restricción 'No comenzar antes del' 12/01/2027 por disponibilidad de recursos.
- 30: Rol P. Nominal: 31 días. Asignación: AnalistaApp 8 h; ProgramadorJr2 96 h + 24 h extra; ProgramadorJr 96 h + 24 h extra.
- 32: Rol T. Nominal: 3 días. Asignación: AnalistaApp 8 h; ProgramadorJr2 8 h; ProgramadorJr 8 h.
- 33: Rol T. Nominal: 2 días. Asignación: ProgramadorJr2 8 h; ProgramadorJr 8 h.
- 34: Rol T. Nominal: 7 días. Asignación: AnalistaApp 16 h; ProgramadorJr2 8 h + 2 h extra; ProgramadorJr 24 h + 6 h extra.
- 36: Rol T. Nominal: 32 h. Asignación: AnalistaApp 16 h; ProgramadorJr2 8 h; ProgramadorJr 8 h.
- 37: Rol JP(1 día) + A(1 día). Nominal: 2 días. Asignación: AnalistaApp 8 h; RespArea 8 h.
- 39: Rol Adm. Nominal: 10 días. Asignación: Administrativa 80 h.
- 40: Rol Adm. Nominal: 5 días. Asignación: Administrativa 40 h.
- 41: Tras finalizar todas las actividades de diseño (4, 5 y 6).
- 42: Una vez validado el producto por los usuarios (9.2).
- 43: Incorporación de ProgramadorJr2 (perfil ProgramadorJr). 5 días de preparación a 8 h/día antes de poder asignarlo; las tareas en las que participa dependen de esta tarea (fin-comienzo).
